# caGrid_Portal-2-1

Schedule from MS Project, 2008-11-05 to 2009-02-19, A marks actual dates.
NCI CBIIT

## Calendars

- Standard: Mon-Fri 08:00-12:00, 13:00-17:00; Sat-Sun off. Exceptions (off unless hours are given): 2008-11-11, 2008-11-27, 2008-12-25, 2009-01-01.

## Resources

| Resource |
| --- |
| Manav Kher |
| Joshua Phillips |
| Carolyln Klinger |
| John Eisenschmidt |
| Quality Assurance |
| Systems |

## Schedule

| ID | WBS | Task | Type | Duration | Start | Finish | Predecessors | Complete | Remaining | Total slack | Free slack | Constraint | Resources | Work |
| --- | --- | --- | --- | --- | --- | --- | --- | --- | --- | --- | --- | --- | --- | --- |
| 1 | 1.0 | **caGrid Portal 2.2** |  | 72.6d? | 2008-11-05 A | 2009-02-19 |  |  | 72.6d? | 0d |  |  |  | 607.2h |
| 2 | 1.1 | Start | milestone | 0d | 2008-11-05 | 2008-11-05 |  |  |  | 72.6d |  | start no earlier than 2008-11-05 |  |  |
| 3 | 1.2 | **Bug Fixes** |  | 0.5d | 2008-11-05 A | 2008-11-05 |  |  | 0.5d | 63d |  |  |  | 7.2h |
| 4 | 1.2.1 | Start | milestone | 0d | 2008-11-05 A | 2008-11-05 A | 2 | 100% |  |  |  |  |  |  |
| 5 | 1.2.2 | training grid syncgts URLs need to be updated |  | 0.5d | 2008-11-05 | 2008-11-05 | 4 |  |  | 63d | 0d |  | Manav Kher [90%] | 3.6h |
| 6 | 1.2.3 | Portal does not delete local user account when deleting liferay user account |  | 0.5d | 2008-11-05 | 2008-11-05 | 4 |  |  | 63d | 0d |  | Manav Kher [90%] | 3.6h |
| 7 | 1.2.4 | Finish | milestone | 0d | 2008-11-05 | 2008-11-05 | 5, 6 |  |  | 63d |  |  |  |  |
| 8 | 1.3 | **Enhancements** |  | 63.5d | 2008-11-05 A | 2009-02-06 |  |  | 63.5d | 0d |  |  |  | 424.8h |
| 9 | 1.3.1 | Start | milestone | 0d | 2008-11-05 A | 2008-11-05 A | 2 | 100% |  |  |  |  |  |  |
| 10 | 1.3.2 | Page Loading Performance Enhancements |  | 10d | 2008-11-05 | 2008-11-26 | 9 |  |  | 0d |  |  | Manav Kher [90%] | 72h |
| 11 | 1.3.3 | Upgrade to Latest Liferay |  | 5d | 2008-11-26 | 2008-12-04 | 10 |  |  | 0d |  |  | Manav Kher [90%] | 36h |
| 12 | 1.3.4 | Tech Stack Update to Latest Spring and Hibernate |  | 5d | 2008-12-04 | 2008-12-11 | 11 |  |  | 0d |  |  | Manav Kher [90%] | 36h |
| 13 | 1.3.5 | Refactor Build Process to Support IVY |  | 10d | 2008-12-11 | 2008-12-26 | 12 |  |  | 0d |  |  | Manav Kher [90%] | 72h |
| 14 | 1.3.6 | Deployment Refactor to Support non-Root Context |  | 3d | 2008-12-26 | 2008-12-31 | 13 |  |  | 0d |  |  | Manav Kher [90%] | 21.6h |
| 15 | 1.3.7 | Community Portlets: Use Cases and SOPs |  | 11d | 2008-12-31 | 2009-01-16 | 14 |  |  | 0d |  |  | Manav Kher [90%] | 79.2h |
| 16 | 1.3.8 | Investigate Feasibility and Performance of WSRP |  | 10d | 2009-01-16 | 2009-01-30 | 15 |  |  | 0d |  |  | Manav Kher [90%] | 72h |
| 17 | 1.3.9 | Support Usability Analysis |  | 5d | 2009-01-30 | 2009-02-06 | 16 |  |  | 0d |  |  | Manav Kher [90%] | 36h |
| 18 | 1.3.10 | Finish | milestone | 0d | 2009-02-06 | 2009-02-06 | 10, 11, 12, 13, 14, 15, 16, 17 |  |  | 0d |  |  |  |  |
| 19 | 1.4 | **Documentation** |  | 7.6d | 2009-02-06 | 2009-02-18 |  |  |  | 0d |  |  |  | 99.6h |
| 20 | 1.4.1 | Start | milestone | 0d | 2009-02-06 | 2009-02-06 | 7, 18 |  |  | 0d |  | start no earlier than 2008-09-22 |  |  |
| 21 | 1.4.2 | Update Admin Guide |  | 4d | 2009-02-06 | 2009-02-12 | 20 |  |  | 3.6d |  |  | Carolyln Klinger | 32h |
| 22 | 1.4.3 | Update Install Guide |  | 3d | 2009-02-06 | 2009-02-12 | 20 |  |  | 3.3d |  |  | Carolyln Klinger | 24h |
| 23 | 1.4.4 | Update User Guide |  | 5d | 2009-02-06 | 2009-02-18 | 20 |  |  | 0d |  |  | Carolyln Klinger | 40h |
| 24 | 1.4.5 | Release Notes |  | 0.5d | 2009-02-13 | 2009-02-13 | 20 |  |  | 2.1d |  |  | Manav Kher [90%] | 3.6h |
| 25 | 1.4.6 | Finish | milestone | 0d | 2009-02-18 | 2009-02-18 | 21, 22, 23, 24 |  |  | 0d |  |  |  |  |

| ID | WBS | Task | Type | Duration | Start | Finish | Predecessors | Total slack | Free slack | Resources | Work |
| --- | --- | --- | --- | --- | --- | --- | --- | --- | --- | --- | --- |
| 26 | 1.5 | **QA** |  | 3d? | 2009-02-06 | 2009-02-11 |  | 0.6d |  |  | 24h |
| 27 | 1.5.1 | Start | milestone | 0d | 2009-02-06 | 2009-02-06 | 7, 18 | 0.6d | 0d |  |  |
| 28 | 1.5.2 | QA Iteration 1 (December) |  | 1d? | 2009-02-06 | 2009-02-09 | 27 | 0.6d | 0d | Quality Assurance | 8h |
| 29 | 1.5.3 | QA Iteration 2 (January) |  | 1d? | 2009-02-09 | 2009-02-10 | 28 | 0.6d | 0d | Quality Assurance | 8h |
| 30 | 1.5.4 | QA Iteration 3 (February) |  | 1d? | 2009-02-10 | 2009-02-11 | 29 | 0.6d | 0d | Quality Assurance | 8h |
| 31 | 1.5.5 | Finish | milestone | 0d | 2009-02-11 | 2009-02-11 | 30 | 0.6d | 0d |  |  |
| 32 | 1.6 | **Deployment** |  | 6.1d | 2009-02-11 | 2009-02-19 |  | 0d |  |  | 51.6h |
| 33 | 1.6.1 | Start | milestone | 0d | 2009-02-11 | 2009-02-11 | 31 | 0.6d | 0d |  |  |
| 34 | 1.6.2 | Stage |  | 1d | 2009-02-11 | 2009-02-12 | 33 | 0.6d | 0d | Systems | 8h |
| 35 | 1.6.3 | App Scan |  | 3d | 2009-02-12 | 2009-02-17 | 34 | 0.6d |  | Systems | 24h |
| 36 | 1.6.4 | Production |  | 1d | 2009-02-18 | 2009-02-19 | 35, 25 | 0d |  | Systems | 8h |
| 37 | 1.6.5 | Update gforge |  | 0.5d | 2009-02-11 | 2009-02-11 | 33 | 5.6d |  | John Eisenschmidt; Manav Kher [90%] | 7.6h |
| 38 | 1.6.6 | Send Release Announcement |  | 0.5d | 2009-02-19 | 2009-02-19 | 36 | 0d |  | John Eisenschmidt | 4h |
| 39 | 1.6.5 | Finish | milestone | 0d | 2009-02-19 | 2009-02-19 | 38 | 0d |  |  |  |
| 40 | 1.7 | Finish | milestone | 0d | 2009-02-19 | 2009-02-19 | 39 | 0d |  |  |  |
