# caGrid_Portal-2-1

Schedule from MS Project, 2008-07-31 to 2008-09-29, A marks actual dates.
Personal

## Calendars

- Standard: Mon-Fri 08:00-12:00, 13:00-17:00; Sat-Sun off.

## Resources

| Resource |
| --- |
| Manav Kher |
| Joshua Phillips |
| Carolyln Klinger |
| John Eisenschmidt |
| Quality Assurance |
| Systems |

## Schedule

| ID | WBS | Task | Type | Duration | Start | Finish | Predecessors | Complete | Remaining | Total slack | Free slack | Resources | Work | Actual work |
| --- | --- | --- | --- | --- | --- | --- | --- | --- | --- | --- | --- | --- | --- | --- |
| 1 | 1.0 | **caGrid Portal 2.0.3** |  | 38.55d | 2008-07-31 A | 2008-09-23 |  | 29% | 27.22d | 3.5d |  |  | 433.2h | 123.84h |
| 2 | 1.1 | Start | milestone | 0d | 2008-07-31 A | 2008-07-31 A |  | 100% |  |  |  |  |  |  |
| 3 | 1.2 | **Bug Fixes** |  | 5d | 2008-07-31 A | 2008-08-06 A | 2 | 100% |  |  |  |  | 72h | 72h |
| 4 | 1.2.1 | Start | milestone | 0d | 2008-07-31 A | 2008-07-31 A |  | 100% |  |  |  |  |  |  |
| 5 | 1.2.2 | RuntimeException thrown in Portal 2.0.2 |  | 5d | 2008-07-31 A | 2008-08-06 A | 4 | 100% |  |  |  | Manav Kher [90%] | 36h | 36h |
| 6 | 1.2.3 | Problem with RFE 12079 implementation for Portal |  | 5d | 2008-07-31 A | 2008-08-06 A | 4 | 100% |  |  |  | Manav Kher [90%] | 36h | 36h |
| 7 | 1.2.4 | Finish | milestone | 0d | 2008-07-31 A | 2008-07-31 A | 5, 6 | 100% |  |  |  |  |  |  |
| 8 | 1.3 | **Enhancements** |  | 30.8d | 2008-07-31 A | 2008-09-11 | 2 | 22% | 24.08d | 0d |  |  | 237.6h | 51.84h |
| 9 | 1.3.1 | Start | milestone | 0d | 2008-07-31 A | 2008-07-31 A |  | 100% |  |  |  |  |  |  |
| 10 | 1.3.2 | User developed Portlets |  | 12d | 2008-07-31 A | 2008-08-22 | 9 | 4% | 11.5d | 14.3d |  | Manav Kher [90%] | 86.4h | 3.6h |
| 11 | 1.3.3 | Discovery Results should show reasearch center information |  | 1d | 2008-07-31 A | 2008-07-31 A | 9 | 100% |  |  |  | Manav Kher [90%] | 7.2h | 7.2h |
| 12 | 1.3.4 | Admin UI for Banning/Unbanning |  | 5d | 2008-07-31 A | 2008-08-06 A | 9 | 100% |  |  |  | Manav Kher [90%] | 36h | 36h |
| 13 | 1.3.5 | Service Diagnostic Portlet |  | 15d | 2008-07-31 A | 2008-09-11 | 9 | 5% | 14.3d | 0d |  | Manav Kher [90%] | 108h | 5.04h |
| 14 | 1.3.6 | Finish | milestone | 0d | 2008-09-11 | 2008-09-11 | 10, 11, 12, 13 |  |  | 0d |  |  |  |  |
| 15 | 1.4 | **Documentation** |  | 5.5d | 2008-09-11 | 2008-09-19 |  |  |  | 5.75d |  |  | 54h |  |
| 16 | 1.4.1 | Start | milestone | 0d | 2008-09-11 | 2008-09-11 | 7, 14 |  |  | 5.75d | 0d |  |  |  |
| 17 | 1.4.2 | Documentation for User-developed Portlets |  | 2d | 2008-09-16 | 2008-09-18 | 16 |  |  | 6.25d | 0.5d | Manav Kher [90%] | 14.4h |  |
| 18 | 1.4.3 | Update Admin Guide |  | 1.5d | 2008-09-11 | 2008-09-15 | 16 |  |  | 9.75d | 4d | Carolyln Klinger | 12h |  |
| 19 | 1.4.4 | Update Install Guide |  | 1.5d | 2008-09-11 | 2008-09-16 | 16 |  |  | 8.45d | 2.7d | Carolyln Klinger | 12h |  |
| 20 | 1.4.5 | Update User Guide |  | 1.5d | 2008-09-11 | 2008-09-17 | 16 |  |  | 7.15d | 1.4d | Carolyln Klinger | 12h |  |
| 21 | 1.4.6 | Release Notes |  | 0.5d | 2008-09-18 | 2008-09-19 | 16 |  |  | 5.75d | 0d | Manav Kher [90%] | 3.6h |  |
| 22 | 1.4.7 | Finish | milestone | 0d | 2008-09-19 | 2008-09-19 | 18, 19, 20, 21, 17 |  |  | 5.75d |  |  |  |  |
| 23 | 1.5 | **QA** |  | 2.5d | 2008-09-11 | 2008-09-16 | 2 |  |  | 0d |  |  | 18h |  |
| 24 | 1.5.1 | Start | milestone | 0d | 2008-09-11 | 2008-09-11 | 7, 14 |  |  | 0d |  |  |  |  |
| 25 | 1.5.2 | Support QA during testing |  | 2.5d | 2008-09-11 | 2008-09-16 | 24 |  |  | 0d |  | Manav Kher [90%] | 18h |  |
| 26 | 1.5.3 | Finish | milestone | 0d | 2008-09-16 | 2008-09-16 | 25 |  |  | 0d |  |  |  |  |

| ID | WBS | Task | Type | Duration | Start | Finish | Predecessors | Total slack | Free slack | Constraint | Resources | Work |
| --- | --- | --- | --- | --- | --- | --- | --- | --- | --- | --- | --- | --- |
| 27 | 1.6 | **Deployment** |  | 5.25d | 2008-09-16 | 2008-09-23 | 2 | 0d |  |  |  | 51.6h |
| 28 | 1.6.1 | Start | milestone | 0d | 2008-09-16 | 2008-09-16 | 26 | 0d |  |  |  |  |
| 29 | 1.6.2 | Stage |  | 1d | 2008-09-16 | 2008-09-17 | 28 | 0d |  |  | Systems | 8h |
| 30 | 1.6.3 | App Scan |  | 3d | 2008-09-17 | 2008-09-22 | 29 | 0d |  |  | Systems | 24h |
| 31 | 1.6.4 | Production |  | 1d | 2008-09-22 | 2008-09-23 | 30 | 0d |  |  | Systems | 8h |
| 32 | 1.6.5 | Update Plome |  | 0.25d | 2008-09-16 | 2008-09-16 | 28 | 8.5d |  |  | John Eisenschmidt | 2h |
| 33 | 1.6.6 | Update gforge |  | 0.5d | 2008-09-16 | 2008-09-16 | 28 | 8.25d |  |  | John Eisenschmidt; Manav Kher [90%] | 7.6h |
| 34 | 1.6.7 | Send Release Announcement |  | 0.25d | 2008-09-23 | 2008-09-23 | 31 | 0d |  |  | John Eisenschmidt | 2h |
| 35 | 1.6.5 | Finish | milestone | 0d | 2008-09-23 | 2008-09-23 | 34 | 0d |  |  |  |  |
| 36 | 1.7 | Finish | milestone | 0d | 2008-09-23 | 2008-09-23 | 35 | 0d |  |  |  |  |
| 37 | 2.0 | **caGrid Portal 2.0.4** |  | 40.05d? | 2008-08-01 | 2008-09-29 |  | 0d |  |  |  | 21.6h |
| 38 | 2.2 | Start | milestone | 0d | 2008-09-23 | 2008-09-23 | 36 | 0d |  | start no earlier than 2008-07-31 |  |  |
| 39 | 2.3 | **Bug Fixes** |  | 0d | 2008-09-23 | 2008-09-23 |  | 1d |  |  |  |  |
| 40 | 2.3.1 | Start | milestone | 0d | 2008-09-23 | 2008-09-23 | 38 | 1d | 0d |  |  |  |
| 41 | 2.3.2 | Finish | milestone | 0d | 2008-09-23 | 2008-09-23 | 40 | 1d |  |  |  |  |
| 42 | 2.4 | **Enhancements** |  | 1d? | 2008-09-23 | 2008-09-24 |  | 0d |  |  |  | 21.6h |
| 43 | 2.4.1 | Start | milestone | 0d | 2008-09-23 | 2008-09-23 | 38 | 0d |  |  |  |  |
| 44 | 2.4.2 | GAARDS UI Integration |  | 1d? | 2008-09-23 | 2008-09-24 | 43 | 0d |  |  |  |  |
| 45 | 2.4.3 | Federated Query Builder Enhancements |  | 1d? | 2008-09-23 | 2008-09-24 | 43 | 0d |  |  |  |  |
| 46 | 2.4.4 | Shared Query Enhancements |  | 1d? | 2008-09-23 | 2008-09-24 | 43 | 0d |  |  |  |  |
| 47 | 2.4.5 | Notification Framework |  | 1d? | 2008-09-23 | 2008-09-24 | 43 | 0d |  |  |  |  |
| 48 | 2.4.6 | Provide RSS feed for newly discovered services |  | 1d? | 2008-09-23 | 2008-09-24 | 43 | 0d |  |  |  |  |
| 49 | 2.4.7 | Support Parameterized Queries |  | 1d? | 2008-09-23 | 2008-09-24 | 43 | 0d |  |  |  |  |
| 50 | 2.4.8 | address xss issues in portal input fields |  | 1d? | 2008-09-23 | 2008-09-24 | 43 | 0d |  |  |  |  |
| 51 | 2.4.9 | Portal needs participant admin UI |  | 1d? | 2008-09-23 | 2008-09-24 | 43 | 0d |  |  | Manav Kher [90%] | 7.2h |
| 52 | 2.4.10 | Provide interface to make participant information update requests. |  | 1d? | 2008-09-23 | 2008-09-24 | 43 | 0d |  |  | Manav Kher [90%] | 7.2h |
| 53 | 2.4.11 | Portal EVS autocompleter should allow user to select where in the metadata the match shold occur. |  | 1d? | 2008-09-23 | 2008-09-24 | 43 | 0d |  |  | Manav Kher [90%] | 7.2h |
| 54 | 2.4.12 | Finish | milestone | 0d | 2008-09-24 | 2008-09-24 | 44, 45, 46, 47, 48, 49, 50, 51, 52, 53 | 0d |  |  |  |  |

| ID | WBS | Task | Type | Duration | Start | Finish | Predecessors | Total slack | Free slack | Constraint |
| --- | --- | --- | --- | --- | --- | --- | --- | --- | --- | --- |
| 55 | 2.5 | **Documentation** |  | 1d? | 2008-09-24 | 2008-09-25 |  | 1.5d |  |  |
| 56 | 2.5.1 | Start | milestone | 0d | 2008-09-24 | 2008-09-24 | 41, 54 | 1.5d | 0d | start no earlier than 2008-07-31 |
| 57 | 2.5.2 | Update Admin Guide |  | 1d? | 2008-09-24 | 2008-09-25 | 56 | 1.5d | 0d | start no earlier than 2008-08-01 |
| 58 | 2.5.3 | Update Install Guide |  | 1d? | 2008-09-24 | 2008-09-25 | 56 | 1.5d | 0d | start no earlier than 2008-08-01 |
| 59 | 2.5.4 | Update User Guide |  | 1d? | 2008-09-24 | 2008-09-25 | 56 | 1.5d | 0d | start no earlier than 2008-08-01 |
| 60 | 2.5.5 | Release Notes |  | 1d? | 2008-09-24 | 2008-09-25 | 56 | 1.5d | 0d | start no earlier than 2008-08-01 |
| 61 | 2.5.6 | Finish | milestone | 0d | 2008-09-25 | 2008-09-25 | 57, 58, 59, 60 | 1.5d |  | start no earlier than 2008-08-01 |
| 62 | 2.6 | **QA** |  | 2.5d | 2008-09-24 | 2008-09-29 |  | 0d |  |  |
| 63 | 2.6.1 | Start | milestone | 0d | 2008-09-24 | 2008-09-24 | 41, 54 | 0d |  | start no earlier than 2008-07-31 |
| 64 | 2.6.2 | Support QA during testing |  | 2.5d | 2008-09-24 | 2008-09-29 | 63 | 0d |  | start no earlier than 2008-08-01 |
| 65 | 2.6.3 | Finish | milestone | 0d | 2008-09-29 | 2008-09-29 | 64 | 0d |  | start no earlier than 2008-08-01 |
| 66 | 2.7 | **Deployment** |  | 5.25d | 2008-08-01 | 2008-08-11 |  | 34.8d |  |  |
| 67 | 2.7.1 | Start | milestone | 0d | 2008-08-01 | 2008-08-01 |  | 34.8d | 0d | start no earlier than 2008-08-01 |
| 68 | 2.7.2 | Stage |  | 1d | 2008-08-04 | 2008-08-04 | 67 | 34.8d | 0d | start no earlier than 2008-08-04 |
| 69 | 2.7.3 | App Scan |  | 3d | 2008-08-05 | 2008-08-07 | 68 | 34.8d | 0d | start no earlier than 2008-08-05 |
| 70 | 2.7.4 | Production |  | 1d | 2008-08-08 | 2008-08-08 | 69 | 34.8d | 0d | start no earlier than 2008-08-06 |
| 71 | 2.7.5 | Update Plome |  | 0.25d | 2008-08-04 | 2008-08-04 | 67 | 39.8d |  | start no earlier than 2008-08-04 |
| 72 | 2.7.6 | Update gforge |  | 0.5d | 2008-08-04 | 2008-08-04 | 67 | 39.55d |  | start no earlier than 2008-08-04 |
| 73 | 2.7.7 | Send Release Announcement |  | 0.25d | 2008-08-11 | 2008-08-11 | 70 | 34.8d | 0d | start no earlier than 2008-08-07 |
| 74 | 2.7.8 | Finish | milestone | 0d | 2008-08-11 | 2008-08-11 | 73 | 34.8d | 0d | start no earlier than 2008-08-07 |
| 75 | 2.8 | Finish | milestone | 0d | 2008-08-11 | 2008-08-11 | 74 | 34.8d |  | start no earlier than 2008-08-07 |
